| TaskID | TaskName | StartDate | EndDate | Duration | resources | Progress | DurationUnit | Predecessor |
| --- | --- | --- | --- | --- | --- | --- | --- | --- |
| 1 | Requirements Specification | 2025-09-08T01:00:00.000Z | 2025-09-28T10:00:00.000Z | 21 | PM PM 100, BA BA 100 | 0 | day |  |
| 2 | · Stakeholders interview, market research | 2025-09-08T01:00:00.000Z | 2025-09-14T10:00:00.000Z | 7 | PM PM 100, BA BA 100 | 0 | day |  |
| 3 | · Functional & Non-functional requirements analysis | 2025-09-15T01:00:00.000Z | 2025-09-19T10:00:00.000Z | 5 | BA BA 100, System Architect System Architect 100 | 0 | day | 2FS |
| 5 | · Create SRS document | 2025-09-20T01:00:00.000Z | 2025-09-25T10:00:00.000Z | 6 | PM PM 100, BA BA 100 | 0 | day | 3FS |
| 4 | · Approve project scope | 2025-09-26T01:00:00.000Z | 2025-09-28T10:00:00.000Z | 3 | PM PM 100, Stakeholders Stakeholders 100 | 0 | day | 5FS |
| 6 | Design | 2025-09-29T01:00:00.000Z | 2025-10-12T10:00:00.000Z | 14 | PM PM 100, System Architect System Architect 100, DB Engineer DB Engineer 100, UI/UX Designer UI/UX Designer 100 | 0 | day |  |
| 7 | · System architecture | 2025-09-29T01:00:00.000Z | 2025-09-30T10:00:00.000Z | 2 | System Architect System Architect 100, PM PM 100 | 0 | day |  |
| 8 | · UI design | 2025-10-01T01:00:00.000Z | 2025-10-12T10:00:00.000Z | 12 | UI/UX Designer UI/UX Designer 100, PM PM 100 | 0 | day |  |
| 28 | · · Storefront pages | 2025-10-01T01:00:00.000Z | 2025-10-06T10:00:00.000Z | 6 | UI/UX Designer UI/UX Designer 100 | 0 | day |  |
| 29 | · · CMS pages | 2025-10-07T01:00:00.000Z | 2025-10-12T10:00:00.000Z | 6 | UI/UX Designer UI/UX Designer 100 | 0 | day |  |
| 9 | · Database design | 2025-10-01T01:00:00.000Z | 2025-10-12T10:00:00.000Z | 12 | DB Engineer DB Engineer 100 | 0 | day |  |
| 30 | · · Define ERD | 2025-10-01T01:00:00.000Z | 2025-10-04T10:00:00.000Z | 4 | DB Engineer DB Engineer 100, System Architect System Architect 100 | 0 | day |  |
| 31 | · · Create database schema & normalization | 2025-10-05T01:00:00.000Z | 2025-10-12T10:00:00.000Z | 8 | DB Engineer DB Engineer 100 | 0 | day |  |
| 10 | Implementation | 2025-10-13T01:00:00.000Z | 2025-11-16T10:00:00.000Z | 35 | PM PM 100, Frontend Dev Team Frontend Dev Team 100, Backend Dev Team Backend Dev Team 100 | 0 | day |  |
| 21 | · Frontend | 2025-10-13T01:00:00.000Z | 2025-11-16T10:00:00.000Z | 35 | Frontend Dev Team Frontend Dev Team 100 | 0 | day |  |
| 32 | · · Product listing page | 2025-10-13T01:00:00.000Z | 2025-10-15T10:00:00.000Z | 3 | Frontend Dev Team Frontend Dev Team 100 | 0 | day |  |
| 23 | · · Product details page | 2025-10-16T01:00:00.000Z | 2025-10-19T10:00:00.000Z | 4 | Frontend Dev Team Frontend Dev Team 100 | 0 | day | 32FS |
| 24 | · · Cart & Checkout page | 2025-10-20T01:00:00.000Z | 2025-10-23T10:00:00.000Z | 4 | Frontend Dev Team Frontend Dev Team 100 | 0 | day | 23FS |
| 25 | · · Blog & Articles page | 2025-10-24T01:00:00.000Z | 2025-10-27T10:00:00.000Z | 4 | Frontend Dev Team Frontend Dev Team 100 | 0 | day | 24FS |
| 26 | · · Profile page | 2025-10-28T01:00:00.000Z | 2025-10-30T10:00:00.000Z | 3 | Frontend Dev Team Frontend Dev Team 100 | 0 | day | 25FS |
| 27 | · · CMS module | 2025-10-31T01:00:00.000Z | 2025-11-16T10:00:00.000Z | 17 | Frontend Dev Team Frontend Dev Team 100 | 0 | day | 26FS |
| 22 | · Backend | 2025-10-13T01:00:00.000Z | 2025-11-16T10:00:00.000Z | 35 | Backend Dev Team Backend Dev Team 100 | 0 | day |  |
| 33 | · · Account & Authentication API | 2025-10-13T01:00:00.000Z | 2025-10-19T10:00:00.000Z | 7 | Backend Dev Team Backend Dev Team 100 | 0 | day |  |
| 34 | · · User Management API | 2025-10-20T01:00:00.000Z | 2025-10-24T10:00:00.000Z | 5 | Backend Dev Team Backend Dev Team 100 | 0 | day | 33FS |
| 35 | · · Product API | 2025-10-25T01:00:00.000Z | 2025-10-31T10:00:00.000Z | 7 | Backend Dev Team Backend Dev Team 100 | 0 | day | 34FS |
| 36 | · · Payment API | 2025-11-01T01:00:00.000Z | 2025-11-03T10:00:00.000Z | 3 | Backend Dev Team Backend Dev Team 100 | 0 | day | 35FS |
| 37 | · · Order API | 2025-11-04T01:00:00.000Z | 2025-11-07T10:00:00.000Z | 4 | Backend Dev Team Backend Dev Team 100 | 0 | day | 36FS |
| 38 | · · Document & Report API | 2025-11-08T01:00:00.000Z | 2025-11-11T10:00:00.000Z | 4 | Backend Dev Team Backend Dev Team 100 | 0 | day | 37FS |
| 39 | · · System Monitoring API | 2025-11-12T01:00:00.000Z | 2025-11-16T10:00:00.000Z | 5 | Backend Dev Team Backend Dev Team 100 | 0 | day | 38FS |
| 17 | Testing | 2025-11-17T01:00:00.000Z | 2025-11-23T10:00:00.000Z | 7 | PM PM 100, Tester Tester 100 | 0 | day |  |
| 18 | · API testing | 2025-11-17T01:00:00.000Z | 2025-11-23T10:00:00.000Z | 7 | Tester Tester 100, Backend Dev Team Backend Dev Team 100 | 0 | day |  |
| 19 | · UI, integration testing | 2025-11-17T01:00:00.000Z | 2025-11-23T10:00:00.000Z | 7 | Tester Tester 100, Frontend Dev Team Frontend Dev Team 100 | 0 | day |  |
| 20 | Document writeup | 2025-11-24T01:00:00.000Z | 2025-11-30T10:00:00.000Z | 7 | PM PM 100, Technical Writer Technical Writer 100, BA BA 100 | 0 | day |  |

Links (from, to):
- 8 12
- 13 17
